# 福莱特自研MES项目

Schedule from a web Gantt chart, 2025-11-18 to 2026-10-23.
Saturdays and Sundays are off

## Schedule

| ID | WBS | Task | Type | Duration | Start | Finish | Complete | Status |
| --- | --- | --- | --- | --- | --- | --- | --- | --- |
| 2 | 1 | 项目启动会 |  | 1d | 2025-11-18 | 2025-11-18 | 100% | done |
| 3 | 2 | **调研** |  | 14d | 2025-11-18 | 2025-12-05 | 100% | done |
| 4 | 2.1 | 计划业务调研 |  | 1d | 2025-11-18 | 2025-11-18 | 100% | done |
| 5 | 2.2 | 原料工段调研 |  | 1d | 2025-11-19 | 2025-11-19 | 100% | done |
| 6 | 2.3 | 熔化工段调研 |  | 1d | 2025-11-19 | 2025-11-19 | 100% | done |
| 7 | 2.4 | 压延工段调研 |  | 1d | 2025-11-19 | 2025-11-19 | 100% | done |
| 8 | 2.5 | 收片工段调研 |  | 1d | 2025-11-20 | 2025-11-20 | 100% | done |
| 9 | 2.6 | 原片品管调研 |  | 1d | 2025-11-20 | 2025-11-20 | 100% | done |
| 10 | 2.7 | 仓库业务调研 |  | 1d | 2025-11-21 | 2025-11-21 | 100% | done |
| 11 | 2.8 | 加工流程业务调研 |  | 2d | 2025-11-25 | 2025-11-26 | 100% | done |
| 12 | 2.9 | 加工品质调研 |  | 1d | 2025-11-26 | 2025-11-26 | 100% | done |
| 13 | 2.10 | 机电业务调研 |  | 1d | 2025-11-27 | 2025-11-27 | 100% | done |
| 14 | 2.11 | 调研情况整理 |  | 9d | 2025-11-18 | 2025-11-28 | 100% | done |
| 15 | 2.12 | 调研报告输出 | fixed end | 14d | 2025-11-18 | 2025-12-05 | 100% | done |
| 16 | 2.13 | 补充调研 |  | 3d | 2025-12-03 | 2025-12-05 | 100% | done |
| 17 | 3 | **蓝图设计方案输出** |  | 21d | 2025-12-03 | 2025-12-31 | 100% | done |
| 18 | 3.1 | 基础数据1 |  | 3d | 2025-12-03 | 2025-12-05 | 100% | done |
| 19 | 3.2 | 基础数据2 |  | 4d | 2025-12-15 | 2025-12-18 | 100% | done |
| 20 | 3.3 | 销售订单管理 |  | 3d | 2025-12-03 | 2025-12-05 | 100% | done |
| 21 | 3.4 | 计划排产 |  | 2d | 2025-12-08 | 2025-12-09 | 100% | done |
| 22 | 3.5 | 生产执行 |  | 3d | 2025-12-10 | 2025-12-12 | 100% | done |
| 23 | 3.6 | 生产过程记录表 |  | 3d | 2025-12-19 | 2025-12-23 | 100% | done |
| 24 | 3.7 | 品质执行 |  | 3d | 2025-12-15 | 2025-12-17 | 100% | done |
| 25 | 3.8 | 品质过程记录表 |  | 8d | 2025-12-10 | 2025-12-19 | 100% | done |
| 26 | 3.9 | 钢化成品抽检记录 |  | 2d | 2025-12-22 | 2025-12-23 | 100% | done |
| 27 | 3.10 | 生产数据生成 |  | 2d | 2025-12-18 | 2025-12-19 | 100% | done |
| 28 | 3.11 | SAP推送 |  | 2d | 2025-12-19 | 2025-12-22 | 100% | done |
| 29 | 3.12 | 仓库 |  | 1d | 2025-12-23 | 2025-12-23 | 100% | done |
| 30 | 3.13 | 内部整合讨论修改 |  | 6d | 2025-12-24 | 2025-12-31 | 100% | done |

| ID | WBS | Task | Duration | Start | Finish | Complete | Status |
| --- | --- | --- | --- | --- | --- | --- | --- |
| 31 | 4 | **设计方案确认** | 49d | 2026-01-13 | 2026-03-20 | 84% |  |
| 32 | 4.1 | **安福业务部门确认** | 3d | 2026-01-13 | 2026-01-15 | 100% | done |
| 33 | 4.1.1 | 计划确认 | 1d | 2026-01-13 | 2026-01-13 | 100% | done |
| 34 | 4.1.2 | 加工确认 | 1d | 2026-01-13 | 2026-01-13 | 100% | done |
| 35 | 4.1.3 | 原料确认 | 1d | 2026-01-14 | 2026-01-14 | 100% | done |
| 36 | 4.1.4 | 压延确认 | 1d | 2026-01-14 | 2026-01-14 | 100% | done |
| 37 | 4.1.5 | 仓库确认 | 1d | 2026-01-14 | 2026-01-14 | 100% | done |
| 38 | 4.1.6 | 收片确认 | 1d | 2026-01-14 | 2026-01-14 | 100% | done |
| 39 | 4.1.7 | 品质确认 | 1d | 2026-01-15 | 2026-01-15 | 100% | done |
| 40 | 4.2 | 方案优化调整 | 4d | 2026-01-19 | 2026-01-22 | 100% | done |
| 41 | 4.3 | 财务需求确认 | 1d | 2026-01-21 | 2026-01-21 | 100% | done |
| 42 | 4.4 | 合格证沟通 | 1d | 2026-01-21 | 2026-01-21 | 100% | done |
| 43 | 4.5 | 销售图纸文件确认 | 3d | 2026-02-27 | 2026-03-03 | 100% | done |
| 44 | 4.6 | 方案业务签字确认 | 3d | 2026-03-18 | 2026-03-20 |  |  |
| 45 | 5 | 开发方案内部沟通 | 4d | 2026-01-27 | 2026-01-30 | 100% | done |
| 46 | 6 | **系统开发** | 86d | 2026-03-03 | 2026-06-30 | 14% |  |
| 47 | 6.1 | **建表** | 17d | 2026-03-03 | 2026-03-25 | 75% |  |
| 48 | 6.1.1 | 系统建表 | 9d | 2026-03-03 | 2026-03-13 | 100% | done |
| 49 | 6.1.2 | 品质填报建表 | 3d | 2026-03-23 | 2026-03-25 |  | waiting |
| 50 | 6.2 | **开发** | 72d | 2026-03-23 | 2026-06-30 |  |  |
| 51 | 6.2.1 | 基础数据 | 1d | 2026-03-23 | 2026-03-23 |  |  |
| 52 | 6.2.2 | 销售订单管理 | 1d | 2026-03-23 | 2026-03-23 |  |  |
| 53 | 6.2.3 | 计划管理 | 1d | 2026-03-23 | 2026-03-23 |  |  |
| 54 | 6.2.4 | 生产管理 | 1d | 2026-03-23 | 2026-03-23 |  |  |
| 55 | 6.2.5 | 生产填报 | 1d | 2026-03-23 | 2026-03-23 |  |  |
| 56 | 6.2.6 | 品质管理 | 1d | 2026-03-23 | 2026-03-23 |  |  |
| 57 | 6.2.7 | 品质填报 | 1d | 2026-03-23 | 2026-03-23 |  |  |
| 58 | 6.2.8 | 生产结果 | 1d | 2026-03-23 | 2026-03-23 |  |  |
| 59 | 6.2.9 | 推送清单 | 1d | 2026-03-23 | 2026-03-23 |  |  |
| 60 | 6.2.10 | 库存管理 | 43d | 2026-05-01 | 2026-06-30 |  |  |
| 61 | 7 | 现场硬件设备准备 | 49d | 2026-05-05 | 2026-07-10 |  | waiting |

| ID | WBS | Task | Duration | Start | Finish | Predecessors | Status |
| --- | --- | --- | --- | --- | --- | --- | --- |
| 62 | 8 | **UAT测试** | 40d | 2026-05-25 | 2026-07-17 |  | waiting |
| 63 | 8.1 | 单元模块、系统内测 | 40d | 2026-05-25 | 2026-07-17 |  | waiting |
| 64 | 8.2 | 系统管理员培训、问题解答和技术支持 | 1d | 2026-05-25 | 2026-05-25 |  | waiting |
| 65 | 8.3 | UAT问题跟进处理 | 40d | 2026-05-25 | 2026-07-17 |  | waiting |
| 66 | 9 | **培训** | 15d | 2026-07-13 | 2026-07-31 |  | waiting |
| 67 | 9.1 | 培训材料编写 | 10d | 2026-07-13 | 2026-07-24 |  | waiting |
| 68 | 9.2 | 系统培训 | 5d | 2026-07-27 | 2026-07-31 | 67 | waiting |
| 69 | 10 | **系统试运行** | 35d | 2026-07-13 | 2026-08-28 |  | waiting |
| 70 | 10.1 | 现场设备硬件确认 | 5d | 2026-07-13 | 2026-07-17 |  | waiting |
| 71 | 10.2 | 试运行环境搭建 | 5d | 2026-07-20 | 2026-07-24 |  | waiting |
| 72 | 10.3 | 试运行数据准备 | 5d | 2026-07-27 | 2026-07-31 |  | waiting |
| 73 | 10.4 | 系统试运行 | 20d | 2026-08-03 | 2026-08-28 | 68 | waiting |
| 74 | 10.5 | 功能优化 | 20d | 2026-08-03 | 2026-08-28 |  | waiting |
| 75 | 11 | **系统上线** | 40d | 2026-08-31 | 2026-10-23 |  | waiting |
| 76 | 11.1 | 正式投产上线 | 20d | 2026-08-31 | 2026-09-25 | 73 | waiting |
| 77 | 11.2 | 验收签字 | 20d | 2026-09-28 | 2026-10-23 |  | waiting |
